# Простые-закупки

How a schedule from MS Project changed from version to version. A marks actual dates.

## Version 1 (saved 2012-03-14)

Note of the change: Файл-план развития проекта, с детализацией задач, сроков, исполнителей.

| ID | WBS | Task | Duration | Start | Finish | Predecessors | Complete | Total float | Constraint |
| --- | --- | --- | --- | --- | --- | --- | --- | --- | --- |
| 1 | 1 | **Исходные шаблоны сайта** | 4d | 2012-03-01 A | 2012-03-06 |  | 87% | 7d |  |
| 2 | 1.1 | **Базовый шаблон** | 1d | 2012-03-01 A | 2012-03-01 A |  | 100% |  |  |
| 3 |  | 1 колонка | 1d | 2012-03-01 A | 2012-03-01 A |  | 100% |  |  |
| 4 |  | 2 колонки - левая и центр | 1d | 2012-03-01 A | 2012-03-01 A |  | 100% |  |  |
| 5 |  | 2 колонки - центр и правая | 1d | 2012-03-01 A | 2012-03-01 A |  | 100% |  |  |
| 6 |  | 3 колонки | 1d | 2012-03-01 A | 2012-03-01 A |  | 100% |  |  |
| 7 |  | Главное меню | 1d | 2012-03-02 A | 2012-03-02 |  | 70% | 9d |  |
| 8 |  | Авторизация | 1d | 2012-03-05 A | 2012-03-05 |  | 90% | 9d |  |
| 9 |  | Меню пользователя | 1d | 2012-03-06 A | 2012-03-06 |  | 50% | 7d |  |
| 10 | 2 | **main.html** | 1d | 2012-03-07 A | 2012-03-07 | 6 | 90% | 7d |  |
| 11 |  | maincolumn | 1d | 2012-03-07 A | 2012-03-07 |  | 80% | 6d |  |
| 12 |  | def main(request) | 1d | 2012-03-07 A | 2012-03-07 A |  | 100% |  |  |
| 13 | 3 | **registration.html** | 2d | 2012-03-08 A | 2012-03-09 | 4 | 30% | 5d |  |
| 14 |  | maincolumn | 1d | 2012-03-08 A | 2012-03-08 |  | 90% | 6d |  |
| 15 |  | def registration(request) | 2d | 2012-03-08 | 2012-03-09 |  |  | 5d | start no earlier than 2012-03-08 |
| 16 | 4 | **purchese.html** | 1d | 2012-03-09 | 2012-03-09 | 4 |  | 5d |  |
| 17 |  | maincolumn | 1d | 2012-03-09 | 2012-03-09 |  |  | 5d | start no earlier than 2012-03-09 |
| 18 |  | def purchase_type_list(request) | 1d | 2012-03-09 | 2012-03-09 |  |  | 5d | start no earlier than 2012-03-09 |
| 19 | 5 | **purchese.html** | 3d? | 2012-03-14 | 2012-03-16 | 4 |  | 0d |  |
| 20 |  | maincolumn | 1d? | 2012-03-14 | 2012-03-14 |  |  | 2d | start no earlier than 2012-03-14 |
| 21 |  | def purchase_list(request, purchase_type, category_id) | 3d? | 2012-03-14 | 2012-03-16 |  |  | 0d | start no earlier than 2012-03-14 |

## Version 2 (saved 2012-03-15)

Note of the change: Актуализация модели, доработка некоторых шаблонов.

Last finish 2012-03-16 → 2012-03-08 (-8d).

Added:

| ID | Task | Duration | Start | Finish | Resources |
| --- | --- | --- | --- | --- | --- |
| 22 | **product_detail.html** | 1d? | 2012-03-01 | 2012-03-01 |  |
| 23 | Шаблон | 1d? | 2012-03-01 | 2012-03-01 | Аносов А.С. |
| 24 | def product_detail(request, product_id) | 1d? | 2012-03-01 | 2012-03-01 | Барабанов Олег |

Changed:

| ID | Task | Start | Finish | Duration | Complete | Total float | Other |
| --- | --- | --- | --- | --- | --- | --- | --- |
| 2 | **base.html** |  |  |  |  |  | was named Базовый шаблон |
| 3 | base1.html |  |  |  |  |  | was named 1 колонка |
| 4 | base2l.html |  |  |  |  |  | was named 2 колонки - левая и центр |
| 5 | base2r.html |  |  |  |  |  | was named 2 колонки - центр и правая |
| 6 | base3.html |  |  |  |  |  | was named 3 колонки |
| 7 | main_menu.html |  |  |  |  | 9d → 4d | was named Главное меню |
| 8 | auth.html |  |  |  |  | 9d → 3d | was named Авторизация |
| 9 | user_menu.html |  |  |  |  | 7d → 2d | was named Меню пользователя |
| 13 | **registration.html** | 2012-03-08 A → 2012-03-01 A (-7d) | 2012-03-09 → 2012-03-08 (-1d) | 2d → 6d |  | 5d → 0d |  |
| 15 | def registration(request) | 2012-03-08 → 2012-03-01 (-7d) | 2012-03-09 → 2012-03-02 (-7d) |  |  | 5d → 4d | constraint start no earlier than 2012-03-08 → none |
| 16 | **purchase_type.html** | 2012-03-09 → 2012-03-02 A (-7d) | 2012-03-09 → 2012-03-02 (-7d) |  | 0% → 90% | 5d → 4d | was named purchese.html |
| 17 | maincolumn | 2012-03-09 → 2012-03-02 A (-7d) | 2012-03-09 → 2012-03-02 (-7d) |  | 0% → 90% | 5d → 4d | constraint start no earlier than 2012-03-09 → none; resources none → Аносов А.С. |
| 18 | def purchase_type_list(request) | 2012-03-09 → 2012-03-02 A (-7d) | 2012-03-09 → 2012-03-02 (-7d) |  | 0% → 90% | 5d → 4d | constraint start no earlier than 2012-03-09 → none |
| 19 | **purchese_list.html** | 2012-03-14 → 2012-03-01 (-13d) | 2012-03-16 → 2012-03-05 (-11d) |  |  | 0d → 3d | was named purchese.html |
| 20 | maincolumn | 2012-03-14 → 2012-03-01 (-13d) | 2012-03-14 → 2012-03-01 (-13d) |  |  | 2d → 5d | constraint start no earlier than 2012-03-14 → none |
| 21 | def purchase_list(request, purchase_type, category_id) | 2012-03-14 → 2012-03-01 (-13d) | 2012-03-16 → 2012-03-05 (-11d) |  |  | 0d → 3d | constraint start no earlier than 2012-03-14 → none |
